# Project Plan Version 2

Schedule from MS Project, 2022-12-06 to 2023-05-16, costs in £, A marks actual dates.

## Calendars

- Standard: Mon-Fri 08:00-12:00, 13:00-17:00; Sat-Sun off. Exceptions (off unless hours are given): 2022-12-19 to 2023-01-08 (Christmas), 2023-01-30 to 2023-02-03 (Element 1 Submission Work), 2023-02-20 to 2023-02-27 (Element 2 Submission Work), 2023-03-28 to 2023-03-31 (Element 3 Submission Work), 2023-04-03 to 2023-04-21 (Easter Break), 2023-05-01 (May Bank Holiday), 2023-05-08 (May Bank Holdiay 2), 2023-05-09 to 2023-05-10 (Safe AI Ethics Assignment), 2023-05-11 08:00-12:00, 13:00-17:00.

## Resources

| Resource | Rate |
| --- | --- |
| FH | 30 |
| NS | 30 |
| AA | 30 |

## Schedule

| ID | WBS | Task | Type | Duration | Start | Finish | Predecessors | Complete | Remaining | Total slack | Resources | Work | Actual work | Cost | Actual cost |
| --- | --- | --- | --- | --- | --- | --- | --- | --- | --- | --- | --- | --- | --- | --- | --- |
| 1 | 1 | **PROJECT INITIATION** |  | 11.12d | 2022-12-06 A | 2023-01-11 A |  | 100% |  |  |  | 518h | 518h | 15,540 | 15,540 |
| 2 | 1.1 | Team contract |  | 0.5d | 2022-12-06 A | 2022-12-06 A |  | 100% |  |  | AA | 4h | 4h | 120 | 120 |
| 3 | 1.2 | Overall sprint planning Team roles/Github Respository/communication plan |  | 2d | 2022-12-06 A | 2022-12-08 A |  | 100% |  |  | AA; FH; NS | 48h | 48h | 1,440 | 1,440 |
| 4 | 1.3 | Research multimodal analysis and image captioning methods |  | 4d | 2022-12-06 A | 2022-12-12 A |  | 100% |  |  | AA; FH; NS | 96h | 96h | 2,880 | 2,880 |
| 5 | 1.4 | WBDS |  | 4d | 2022-12-08 A | 2022-12-14 A | 4 | 100% |  |  | AA; FH; NS | 96h | 96h | 2,880 | 2,880 |
| 6 | 1.5 | PID initial research checklist |  | 1d | 2022-12-12 A | 2022-12-13 A | 5 | 100% |  |  | NS | 8h | 8h | 240 | 240 |
| 7 | 1.6 | Project scope, Create aims and objectives |  | 2.75d | 2022-12-06 A | 2022-12-08 A | 6 | 100% |  |  | AA | 22h | 22h | 660 | 660 |
| 8 | 1.7 | Research Statement/methodology |  | 0.5d | 2022-12-13 A | 2022-12-13 A | 6 | 100% |  |  | FH | 4h | 4h | 120 | 120 |
| 9 | 1.8 | Research generic framework individual app medical Paper |  | 8d | 2022-12-08 A | 2022-12-20 A | 7 | 100% |  |  | AA; FH; NS | 192h | 192h | 5,760 | 5,760 |
| 10 | 1.9 | Project requirements |  | 1d | 2023-01-09 A | 2023-01-09 A | 9 | 100% |  |  | AA; NS | 16h | 16h | 480 | 480 |
| 11 | 1.10 | Determine deliverables |  | 0.25d | 2023-01-10 A | 2023-01-10 A | 10 | 100% |  |  | FH | 2h | 2h | 60 | 60 |
| 12 | 1.11 | stablish project assumptions/limitations/constraints/opportunities |  | 1d | 2023-01-10 A | 2023-01-10 A | 10 | 100% |  |  | NS | 8h | 8h | 240 | 240 |
| 13 | 1.12 | Conduct project risk assessment |  | 1d | 2022-12-22 A | 2023-01-11 A | 11, 12 | 100% |  |  | FH | 8h | 8h | 240 | 240 |
| 14 | 1.13 | Choose method and conduct cost/benefit analysis/resourcing |  | 0.5d | 2022-12-08 A | 2022-12-08 A | 3 | 100% |  |  | NS | 4h | 4h | 120 | 120 |
| 15 | 1.14 | Establish quality framework for project |  | 0.25d | 2023-01-10 A | 2023-01-10 A | 10 | 100% |  |  | NS | 2h | 2h | 60 | 60 |
| 16 | 1.15 | Create presentation skeleton |  | 1d | 2023-01-10 A | 2023-01-10 A | 10 | 100% |  |  | FH | 8h | 8h | 240 | 240 |
| 17 | 1.16 | Complete PID | milestone | 0d | 2023-01-10 A | 2023-01-10 A | 15 | 100% |  |  | NS |  |  |  |  |
| 18 | 2 | **SPRINT PLANNING (MAIN APP)** |  | 4.25d | 2022-12-27 A | 2023-01-13 A |  | 100% |  |  |  | 56h | 56h | 1,680 | 1,680 |
| 19 | 2.1 | Build task checklist/Backlog |  | 3d | 2023-01-10 A | 2023-01-13 A | 17 | 100% |  |  | NS; FH | 48h | 48h | 1,440 | 1,440 |
| 20 | 2.2 | Create sprint plan and allocate scrum master |  | 1d | 2022-12-27 A | 2022-12-28 A | 19 | 100% |  |  | FH | 8h | 8h | 240 | 240 |
| 21 | 2.3 | Completed sprint plan | milestone | 0d | 2022-12-28 A | 2022-12-28 A | 20 | 100% |  |  | FH |  |  |  |  |
| 22 | 3 | **SPRINT 1 - Data Exploration and Methods** |  | 13d | 2023-01-09 A | 2023-01-25 |  | 95% | 0.6d | 44.12d |  | 200h | 192h | 6,000 | 5,760 |
| 23 | 3.1 | Conduct research of algorithms, theories and modals of medical app |  | 3d | 2023-01-09 A | 2023-01-11 A | 21 | 100% |  |  | AA; FH; NS | 72h | 72h | 2,160 | 2,160 |
| 24 | 3.2 | Create visual map of algorithms, theories and modals |  | 1d | 2023-01-12 A | 2023-01-12 | 23 | 80% | 0.2d | 53.12d | AA; FH; NS | 24h | 19.2h | 720 | 576 |
| 25 | 3.3 | Source the dataset, verify against the problem |  | 2d | 2023-01-13 A | 2023-01-16 A | 24 | 100% |  |  | AA; FH; NS | 48h | 48h | 1,440 | 1,440 |
| 26 | 3.4 | Identify methodology and experiment design |  | 1.5d | 2023-01-17 A | 2023-01-18 A | 25 | 100% |  |  | FH | 12h | 12h | 360 | 360 |
| 27 | 3.5 | Checkpoint with supervisors on plans |  | 0.5d | 2023-01-18 A | 2023-01-18 A | 26 | 100% |  |  | NS | 4h | 4h | 120 | 120 |
| 28 | 3.6 | Data pre-processing and cleaning |  | 1.5d | 2023-01-19 A | 2023-01-20 A | 27 | 100% |  |  | AA | 12h | 12h | 360 | 360 |
| 29 | 3.7 | Perform the descriptive analytics/visualization |  | 2d | 2023-01-20 A | 2023-01-24 | 28 | 80% | 0.4d | 45.62d | AA | 16h | 12.8h | 480 | 384 |
| 30 | 3.8 | Extract features and model methods |  | 1.5d | 2023-01-24 A | 2023-01-25 A | 29 | 100% |  |  | AA | 12h | 12h | 360 | 360 |
| 31 | 3.9 | Complete sprint 1 | milestone | 0d | 2023-01-25 A | 2023-01-25 | 30 | 95% | 0d | 44.12d | AA; FH; NS |  |  |  |  |

| ID | WBS | Task | Type | Duration | Start | Finish | Predecessors | Complete | Remaining | Actual finish | Total slack | Free slack | Resources | Work | Actual work | Cost | Actual cost |
| --- | --- | --- | --- | --- | --- | --- | --- | --- | --- | --- | --- | --- | --- | --- | --- | --- | --- |
| 32 | 4 | **SPRINT 2 - Vision to NLP** |  | 11.75d | 2023-01-26 A | 2023-02-17 A |  | 100% |  |  |  |  |  | 110h | 110h | 3,300 | 3,300 |
| 33 | 4.1 | Conduct image processing, model planning |  | 2.5d | 2023-01-26 A | 2023-02-06 A | 31 | 100% |  |  |  |  | AA | 20h | 20h | 600 | 600 |
| 34 | 4.2 | Checkpoint with supervisors on plans |  | 0.5d | 2023-02-06 A | 2023-02-06 A | 33 | 100% |  |  |  |  | AA; FH; NS | 12h | 12h | 360 | 360 |
| 35 | 4.3 | Perform data splitting |  | 0.5d | 2023-02-07 A | 2023-02-07 A | 34 | 100% |  |  |  |  | AA | 4h | 4h | 120 | 120 |
| 36 | 4.4 | Perform training and validation of the object detection model |  | 2d | 2023-02-07 A | 2023-02-09 A | 35 | 100% |  |  |  |  | AA | 16h | 16h | 480 | 480 |
| 37 | 4.5 | Perform model testing on domain specific (medical) |  | 5d | 2023-02-09 A | 2023-02-16 A | 36 | 100% |  |  |  |  | AA | 40h | 40h | 1,200 | 1,200 |
| 38 | 4.6 | Checkpoint with supervisors on plans |  | 0.5d | 2023-02-16 A | 2023-02-16 A | 37 | 100% |  |  |  |  | AA; FH; NS | 12h | 12h | 360 | 360 |
| 39 | 4.7 | Collect and store the tags (objects) |  | 0.75d | 2023-02-17 A | 2023-02-17 A | 38 | 100% |  |  |  |  | AA | 6h | 6h | 180 | 180 |
| 40 | 4.8 | Complete sprint 2 | milestone | 0d | 2023-02-17 A | 2023-02-17 A | 39 | 100% |  |  |  |  | AA; FH; NS |  |  |  |  |
| 41 | 5 | **SPRINT 3 - NLP** |  | 10.5d | 2023-02-17 A | 2023-03-14 |  | 99% | 0d |  | 21.88d |  |  | 92h | 92h | 2,760 | 2,760 |
| 42 | 5.1 | Gather data |  | 1.5d | 2023-02-17 A | 2023-03-01 A | 40 | 100% |  |  |  |  | AA | 12h | 12h | 360 | 360 |
| 43 | 5.2 | Perform data splitting |  | 1d | 2023-03-01 A | 2023-03-02 A | 42 | 100% |  |  |  |  | AA | 8h | 8h | 240 | 240 |
| 44 | 5.3 | Checkpoint with supervisors |  | 0.5d | 2023-03-02 A | 2023-03-02 A | 43 | 100% |  |  |  |  | AA; FH; NS | 12h | 12h | 360 | 360 |
| 45 | 5.4 | Train model |  | 2d | 2023-03-02 A | 2023-03-06 A | 44 | 100% |  |  |  |  | AA | 16h | 16h | 480 | 480 |
| 46 | 5.5 | Evaulate model performance |  | 1.5d | 2023-03-06 A | 2023-03-08 A | 45 | 100% |  |  |  |  | AA | 12h | 12h | 360 | 360 |
| 47 | 5.6 | Integrate Vision and NLP embeddings |  | 2d | 2023-03-08 A | 2023-03-10 A | 46 | 100% |  |  |  |  | AA | 16h | 16h | 480 | 480 |
| 48 | 5.7 | Test and model evaluation |  | 2d | 2023-03-10 A | 2023-03-14 A | 47 | 100% |  |  |  |  | AA; FH; NS | 16h | 16h | 480 | 480 |
| 49 | 5.8 | Complete sprint 3 | milestone | 0d | 2023-03-14 | 2023-03-14 | 48 |  |  |  | 3.88d | 0d | AA; FH; NS |  |  |  |  |
| 50 | 6 | **SPRINT 4 - Surveillance Application** |  | 7d | 2023-03-14 A | 2023-03-23 |  | 100% |  | 2023-03-14 |  |  |  |  |  |  |  |
| 51 | 6.1 | Attend Surveilance Lecture | milestone | 0d | 2023-03-14 A | 2023-03-14 A | 49 | 100% |  |  |  |  | AA; FH; NS |  |  |  |  |
| 52 | 7 | Research and review surveillance experiment |  | 1d | 2023-03-14 A | 2023-03-15 A | 51 | 100% |  |  |  |  | AA; FH; NS | 24h | 24h | 720 | 720 |
| 53 | 8 | Re-run those experiments |  | 2d | 2023-03-15 A | 2023-03-17 | 52 | 80% | 0.4d |  | 14.88d | 0d | AA; FH; NS | 48h | 38.4h | 1,440 | 1,152 |
| 54 | 9 | Create Test Plan |  | 2d | 2023-03-17 | 2023-03-21 | 53 |  |  |  | 14.88d | 0d | AA; FH | 32h |  | 960 |  |
| 55 | 10 | Model Evaluation |  | 1d | 2023-03-21 | 2023-03-22 | 54 |  |  |  | 14.88d | 0d | AA | 8h |  | 240 |  |
| 56 | 11 | Report on Surveillance Application |  | 1d | 2023-03-22 | 2023-03-23 | 55 |  |  |  | 14.88d |  | AA; FH; NS | 24h |  | 720 |  |

| ID | WBS | Task | Type | Duration | Start | Finish | Predecessors | Complete | Remaining | Actual start | Total slack | Constraint | Resources | Work | Actual work | Cost | Actual cost |
| --- | --- | --- | --- | --- | --- | --- | --- | --- | --- | --- | --- | --- | --- | --- | --- | --- | --- |
| 57 | 12 | **SPRINT 5 - ALTERNATIVE EXPERIMENT** |  | 8d | 2023-03-21 | 2023-04-27 |  | 94% | 0.5d | 2023-03-23 |  |  |  | 92h | 92h | 2,760 | 2,760 |
| 58 | 12.1 | Research Multi-Modal alternative experiment |  | 2d | 2023-03-23 A | 2023-03-27 A | 56 | 100% |  |  |  |  | AA; FH; NS | 48h | 48h | 1,440 | 1,440 |
| 59 | 12.2 | Review the Datasets |  | 3d | 2023-03-27 A | 2023-04-26 A | 58 | 100% |  |  |  |  | AA | 24h | 24h | 720 | 720 |
| 60 | 12.3 | Analyse Experiment |  | 1d | 2023-04-26 A | 2023-04-27 A | 59 | 100% |  |  |  |  | AA | 8h | 8h | 240 | 240 |
| 61 | 12.4 | Check Supervisior Checkpoint |  | 0.5d | 2023-04-27 | 2023-04-27 | 60 |  |  |  | 8.38d |  |  |  |  |  |  |
| 62 | 12.5 | Conduct Experiment |  | 0.5d | 2023-04-27 A | 2023-04-28 A | 61 | 100% |  |  |  |  | AA | 4h | 4h | 120 | 120 |
| 63 | 12.6 | Test and analyse results |  | 1d | 2023-04-28 A | 2023-05-02 A | 62 | 100% |  |  |  |  | AA | 8h | 8h | 240 | 240 |
| 64 | 12.7 | Create report on alternative experiment | milestone | 0d | 2023-05-02 A | 2023-05-02 | 63 | 50% | 0d |  | 6.88d |  | AA |  |  |  |  |
| 65 | 13 | **SPRINT 6 - CONDUCTING PRESENTATION** |  | 6.88d | 2023-05-02 A | 2023-05-16 A |  | 100% |  |  |  |  |  | 90h | 90h | 2,700 | 2,700 |
| 66 | 13.1 | Create checklist of missing work from Project Plan |  | 0.25d | 2023-05-02 A | 2023-05-02 A | 64 | 100% |  |  |  |  | FH | 2h | 2h | 60 | 60 |
| 67 | 13.2 | Practice Prezi |  | 1d | 2023-05-02 A | 2023-05-03 A | 66 | 100% |  |  |  |  | FH | 8h | 8h | 240 | 240 |
| 68 | 13.3 | Create Demo Plan |  | 1d | 2023-05-03 A | 2023-05-04 A | 67 | 100% |  |  |  |  | AA | 8h | 8h | 240 | 240 |
| 69 | 13.4 | Create Powerpoint Slides and merge with Prezi |  | 2d | 2023-05-11 A | 2023-05-15 A | 68 | 100% |  |  |  | start no earlier than 2023-05-11 | AA; FH; NS | 48h | 48h | 1,440 | 1,440 |
| 70 | 13.5 | Practice Presentation and Update |  | 1d | 2023-05-15 A | 2023-05-16 A | 69 | 100% |  |  |  | start no earlier than 2023-05-15 | AA; FH; NS | 24h | 24h | 720 | 720 |
| 71 | 13.6 | Deliver Presentation and Demo | milestone | 0d | 2023-05-16 A | 2023-05-16 A | 70 | 100% |  |  |  | start no earlier than 2023-05-16 | AA; FH; NS |  |  |  |  |
